# 海珠区气象局网管监控系统项目计划

Schedule from MS Project, 2016-10-17 to 2017-08-14, 7 hours a day, A marks actual dates.
Microsoft

## Calendars

- 软件项目日历: Mon-Fri 09:00-12:00, 14:00-18:00; Sat-Sun off. Exceptions (off unless hours are given): 2017-01-02 (元旦休假), 2017-01-13 (年会), 2017-01-22 09:00-12:00, 14:00-18:00 (春节补班), 2017-01-27 to 2017-02-02 (春节休假), 2017-02-04 09:00-12:00, 14:00-18:00 (春节补班).

## Resources

| Resource |
| --- |
| 林欣欣 |
| 黄文静 |
| 黄家庆 |
| 尹世胜 |
| 郭旭壮 |
| 郑一丹 |
| 韦正飞 |
| 梁光炯 |
| 李孟光 |
| peter |
| 彭鹏 |
| 杨锦颖 |
| 彭毅 |
| 刘勇华 |
| 王美玲 |
| 谢坤伦 |
| 王晓胜 |
| 姚亚莲 |
| 蔡佳俊 |
| 曾龙 |
| 唐赞勇 |
| 蔡晓妹 |
| 许红伟 |
| 李丽 |
| 19 |
| 张小琴 |
| 105 |
| 106 |

## Schedule

| ID | WBS | Task | Type | Duration | Start | Finish | Predecessors | Complete | Remaining | Total slack | Free slack | Constraint | Resources | Work | Actual work |
| --- | --- | --- | --- | --- | --- | --- | --- | --- | --- | --- | --- | --- | --- | --- | --- |
| 1 | 1 | **云南省预警信息精准发布辅助支撑系统** |  | 210.5d? | 2016-10-17 A | 2017-08-14 |  | 12% | 184.24d? | 0d |  |  |  | 1827h | 207.38h |
| 2 | 1.1 | **启动阶段** |  | 91.5d? | 2016-10-17 A | 2017-02-28 |  | 91% | 8.35d? | 119d |  |  |  | 220.5h | 200.38h |
| 3 | 1.1.1 | 项目解决方案 |  | 24d? | 2016-10-17 A | 2016-11-17 A |  | 100% |  |  |  | finish no earlier than 2016-11-17 | 郑一丹 | 168h | 168h |
| 4 | 1.1.2 | 需求确认 |  | 2d? | 2017-02-09 A | 2017-02-10 |  | 50% | 1d? | 130.5d |  | finish no earlier than 2017-02-10 | 郑一丹 | 14h | 7h |
| 5 | 1.1.3 | 工作范围说明书 |  | 0.5d | 2017-02-14 A | 2017-02-14 A |  | 100% |  |  |  | start no earlier than 2017-02-14 | 郑一丹 | 3.5h | 3.5h |
| 6 | 1.1.4 | 项目里程碑 |  | 0.5d | 2017-02-09 A | 2017-02-09 A |  | 100% |  |  |  | start no earlier than 2017-02-09 | 林欣欣 | 3.5h | 3.5h |
| 7 | 1.1.5 | 项目启动会（对外） |  | 0.5d | 2017-02-09 A | 2017-02-09 A |  | 100% |  |  |  | start no earlier than 2017-02-09 | 林欣欣 | 3.5h | 3.5h |
| 8 | 1.1.6 | 合同签署 | manual | 1d | 2016-10-17 | 2016-10-17 |  |  |  |  |  |  | 李丽 | 7h |  |
| 9 | 1.1.7 | 人员申请 |  | 0.5d | 2017-02-22 A | 2017-02-22 |  | 50% | 0.25d | 123d |  | start no earlier than 2017-02-22 | 林欣欣 | 3.5h | 1.75h |
| 10 | 1.1.8 | 项目干系人列表 |  | 0.5d | 2017-02-08 A | 2017-02-08 |  | 75% | 0.12d | 133d |  | start no earlier than 2017-02-08 | 林欣欣 | 3.5h | 2.62h |
| 11 | 1.1.9 | WBS |  | 0.5d | 2017-02-08 A | 2017-02-08 A |  | 100% |  |  |  | start no earlier than 2017-02-08 | 林欣欣 | 3.5h | 3.5h |
| 12 | 1.1.10 | 项目立项 |  | 0.5d | 2017-02-21 A | 2017-02-21 A |  | 100% |  |  |  | start no earlier than 2017-02-21 | 林欣欣 | 3.5h | 3.5h |
| 13 | 1.1.11 | 项目计划 |  | 0.5d | 2017-02-23 A | 2017-02-23 A |  | 100% |  |  |  | start no earlier than 2017-02-23 | 林欣欣 | 3.5h | 3.5h |
| 14 | 1.1.12 | 项目启动会（对内） |  | 0.5d | 2017-02-28 | 2017-02-28 |  |  |  | 119d |  | start no earlier than 2017-02-28 | 林欣欣 | 3.5h |  |
| 15 | 1.2 | **规划阶段** |  | 5d | 2017-03-08 | 2017-03-14 |  |  |  | 0d |  |  |  | 42h |  |
| 16 | 1.2.1 | 原型设计 | manual | 1d | 2017-03-08 | 2017-03-08 |  |  |  |  |  |  | 郑一丹 | 7h |  |
| 17 | 1.2.2 | 界面设计 |  | 5d | 2017-03-08 | 2017-03-14 |  |  |  | 108.5d |  | start no earlier than 2017-03-08 | 黄文静 | 35h |  |
| 18 | 1.3 | **执行阶段** |  | 83d? | 2017-02-14 A | 2017-06-08 |  | 1% | 82.41d? | 46.5d |  |  |  | 987h | 7h |
| 19 | 1.3.1 | **开发阶段** |  | 78d? | 2017-02-14 A | 2017-06-01 |  | 1% | 77.4d? | 6.5d | 0d |  |  | 917h | 7h |
| 20 | 1.3.1.1 | **前端开发** |  | 59d? | 2017-03-13 | 2017-06-01 |  |  |  | 6.5d |  |  |  | 420h |  |
| 21 | 1.3.1.1.1 | **基础支撑系统** |  | 59d? | 2017-03-13 | 2017-06-01 |  |  |  | 6.5d |  |  |  | 413h |  |
| 22 | 1.3.1.1.1.1 | 地图下载部署 |  | 1d | 2017-03-13 | 2017-03-13 |  |  |  | 64.5d |  | start no earlier than 2017-03-13 | 尹世胜 | 7h |  |
| 23 | 1.3.1.1.1.2 | 系统打包 |  | 5d | 2017-03-13 | 2017-03-17 |  |  |  | 6.5d | 0d | start no earlier than 2017-03-13 | 王美玲 | 35h |  |
| 24 | 1.3.1.1.1.3 | 功能隐藏 |  | 3d | 2017-03-20 | 2017-03-22 | 23 |  |  | 6.5d | 0d |  | 王美玲 | 21h |  |
| 25 | 1.3.1.1.1.4 | 数据分类 |  | 1d | 2017-03-23 | 2017-03-23 | 24 |  |  | 6.5d | 0d |  | 王美玲 | 7h |  |
| 26 | 1.3.1.1.1.5 | 行政区划 |  | 2d | 2017-03-30 | 2017-03-31 | 41 |  |  | 6.5d | 0d | start no earlier than 2017-03-13 | 王美玲 | 14h |  |
| 27 | 1.3.1.1.1.6 | 人口经济 |  | 1d? | 2017-04-03 | 2017-04-03 | 26 |  |  | 6.5d | 0d |  | 王美玲 | 7h |  |
| 28 | 1.3.1.1.1.7 | 地震带分布 |  | 2d | 2017-04-04 | 2017-04-05 | 27 |  |  | 6.5d | 0d |  | 王美玲 | 14h |  |
| 29 | 1.3.1.1.1.8 | 历史地震数据 |  | 1d? | 2017-04-06 | 2017-04-06 | 28 |  |  | 6.5d | 0d |  | 王美玲 | 7h |  |
| 30 | 1.3.1.1.1.9 | 医院、学校、危险化学品存储点、旅游景点、农作物种植分布、避难场所、应急物资、救援力量 |  | 3d | 2017-04-07 | 2017-04-11 | 29 |  |  | 6.5d | 0d |  | 王美玲 | 21h |  |
| 31 | 1.3.1.1.1.10 | 自动监测站 |  | 1d? | 2017-03-24 | 2017-03-24 | 25 |  |  | 6.5d | 0d |  | 王美玲 | 7h |  |
| 32 | 1.3.1.1.1.11 | 雷达回波 |  | 1d? | 2017-03-27 | 2017-03-27 | 31 |  |  | 6.5d | 0d |  | 王美玲 | 7h |  |
| 33 | 1.3.1.1.1.12 | 卫星云图 |  | 1d? | 2017-03-28 | 2017-03-28 | 32 |  |  | 6.5d | 0d |  | 王美玲 | 7h |  |
| 34 | 1.3.1.1.1.13 | 地震监测动态 |  | 8d | 2017-04-12 | 2017-04-21 | 30 |  |  | 6.5d | 0d |  | 王美玲 | 56h |  |
| 35 | 1.3.1.1.1.14 | 实时人口热力图 |  | 3d | 2017-05-02 | 2017-05-04 | 39 |  |  | 6.5d | 0d |  | 王美玲 | 21h |  |
| 36 | 1.3.1.1.1.15 | 交通路网分布 |  | 8d | 2017-05-05 | 2017-05-16 | 35 |  |  | 6.5d | 0d |  | 王美玲 | 56h |  |
| 37 | 1.3.1.1.1.16 | 交通拥堵实况 |  | 10d | 2017-05-17 | 2017-05-30 | 36 |  |  | 6.5d | 0d |  | 王美玲 | 70h |  |
| 38 | 1.3.1.1.1.17 | 地质灾害隐患动态 |  | 2d | 2017-04-24 | 2017-04-25 | 34 |  |  | 6.5d | 0d |  | 王美玲 | 14h |  |
| 39 | 1.3.1.1.1.18 | 水库水情动态 |  | 4d | 2017-04-26 | 2017-05-01 | 38 |  |  | 6.5d | 0d |  | 王美玲 | 28h |  |
| 40 | 1.3.1.1.1.19 | 空气质量动态 |  | 2d | 2017-05-31 | 2017-06-01 | 37 |  |  | 6.5d |  |  | 王美玲 | 14h |  |

| ID | WBS | Task | Duration | Start | Finish | Predecessors | Complete | Remaining | Total slack | Free slack | Constraint | Resources | Work | Actual work |
| --- | --- | --- | --- | --- | --- | --- | --- | --- | --- | --- | --- | --- | --- | --- |
| 41 | 1.3.1.1.2 | **实景图像视频系统** | 1d? | 2017-03-29 | 2017-03-29 | 33 |  |  | 6.5d | 0d |  |  | 7h |  |
| 42 | 1.3.1.1.2.1 | 视频对接 | 1d? | 2017-03-29 | 2017-03-29 |  |  |  | 6.5d |  |  | 王美玲 | 7h |  |
| 43 | 1.3.1.2 | **后端开发** | 55d? | 2017-02-23 A | 2017-05-10 |  | 2% | 54d? | 19.5d | 0d |  |  | 385h | 7h |
| 44 | 1.3.1.2.1 | **基础支撑系统** | 55d? | 2017-02-23 A | 2017-05-10 |  | 2% | 53.96d? | 19.5d |  |  |  | 371h | 7h |
| 45 | 1.3.1.2.1.1 | 云南省CIMISS数据了解 | 1d? | 2017-02-23 A | 2017-02-23 A |  | 100% |  |  |  | start no earlier than 2017-02-23 | 唐赞勇 | 7h | 7h |
| 46 | 1.3.1.2.1.2 | 行政区划 | 4d | 2017-03-16 | 2017-03-21 | 59 |  |  | 19.5d | 0d |  | 唐赞勇 | 28h |  |
| 47 | 1.3.1.2.1.3 | 人口经济 | 2d | 2017-03-22 | 2017-03-23 | 46 |  |  | 19.5d | 0d |  | 唐赞勇 | 14h |  |
| 48 | 1.3.1.2.1.4 | 地震带分布 | 5d | 2017-03-24 | 2017-03-30 | 47 |  |  | 19.5d | 0d |  | 唐赞勇 | 35h |  |
| 49 | 1.3.1.2.1.5 | 历史地震数据 | 3d | 2017-03-31 | 2017-04-04 | 48 |  |  | 19.5d | 0d |  | 唐赞勇 | 21h |  |
| 50 | 1.3.1.2.1.6 | 医院、学校、危险化学品存储点、旅游景点、农作物种植分布、避难场所、应急物资、救援力量 | 5d | 2017-04-05 | 2017-04-11 | 49 |  |  | 19.5d | 0d |  | 唐赞勇 | 35h |  |
| 51 | 1.3.1.2.1.7 | 自动监测站 | 3d | 2017-02-24 | 2017-02-28 | 45 |  |  | 19.5d | 0d |  | 唐赞勇 | 21h |  |
| 52 | 1.3.1.2.1.8 | 雷达回波 | 5d | 2017-03-01 | 2017-03-07 | 51 |  |  | 19.5d | 0d | start no earlier than 2017-02-24 | 唐赞勇 | 35h |  |
| 53 | 1.3.1.2.1.9 | 卫星云图 | 4d | 2017-03-08 | 2017-03-13 | 52 |  |  | 19.5d | 0d |  | 唐赞勇 | 28h |  |
| 54 | 1.3.1.2.1.10 | 地震监测动态 | 4d | 2017-04-12 | 2017-04-17 | 50 |  |  | 19.5d | 0d |  | 唐赞勇 | 28h |  |
| 55 | 1.3.1.2.1.11 | 实时人口热力图 | 5d | 2017-04-18 | 2017-04-24 | 54 |  |  | 19.5d | 0d |  | 唐赞勇 | 35h |  |
| 56 | 1.3.1.2.1.12 | 交通拥堵实况 | 5d | 2017-04-25 | 2017-05-01 | 55 |  |  | 19.5d | 0d |  | 唐赞勇 | 35h |  |
| 57 | 1.3.1.2.1.13 | 水库水情动态 | 4d | 2017-05-02 | 2017-05-05 | 56 |  |  | 19.5d | 0d |  | 唐赞勇 | 28h |  |
| 58 | 1.3.1.2.1.14 | 空气质量动态 | 3d | 2017-05-08 | 2017-05-10 | 57 |  |  | 19.5d |  |  | 唐赞勇 | 21h |  |
| 59 | 1.3.1.2.2 | **实景图像视频系统** | 2d | 2017-03-14 | 2017-03-15 | 53 |  |  | 19.5d | 0d |  |  | 14h |  |
| 60 | 1.3.1.2.2.1 | 视频对接 | 2d | 2017-03-14 | 2017-03-15 |  |  |  | 19.5d |  |  | 唐赞勇 | 14h |  |
| 61 | 1.3.1.3 | **OPP开发** | 16d? | 2017-03-23 | 2017-04-13 |  |  |  | 41.5d |  |  |  | 63h |  |
| 62 | 1.3.1.3.1 | **基础支撑系统** | 16d | 2017-03-23 | 2017-04-13 |  |  |  | 41.5d |  |  |  | 49h |  |
| 63 | 1.3.1.3.1.1 | 数据分类 | 1d | 2017-03-23 | 2017-03-23 |  |  |  | 48.5d | 0d | start no earlier than 2017-03-23 | 韦正飞 | 7h |  |
| 64 | 1.3.1.3.1.2 | 历史地震数据 | 1d | 2017-04-06 | 2017-04-06 | 66 |  |  | 41.5d | 0d | start no earlier than 2017-04-06 | 韦正飞 | 7h |  |
| 65 | 1.3.1.3.1.3 | 医院、学校、危险化学品存储点、旅游景点、农作物种植分布、避难场所、应急物资、救援力量 | 5d | 2017-04-07 | 2017-04-13 | 64 |  |  | 41.5d |  |  | 韦正飞 | 35h |  |

| ID | WBS | Task | Duration | Start | Finish | Predecessors | Total slack | Free slack | Constraint | Resources | Work |
| --- | --- | --- | --- | --- | --- | --- | --- | --- | --- | --- | --- |
| 66 | 1.3.1.3.2 | **后台管理系统** | 2d? | 2017-03-24 | 2017-03-27 | 63 | 48.5d | 7d |  |  | 14h |
| 67 | 1.3.1.3.2.1 | 用户及权限管理系统 | 1d? | 2017-03-24 | 2017-03-24 |  | 48.5d | 0d |  | 韦正飞 | 7h |
| 68 | 1.3.1.3.2.2 | 数据管理系统 | 1d? | 2017-03-27 | 2017-03-27 | 67 | 48.5d |  |  | 韦正飞 | 7h |
| 69 | 1.3.1.4 | **技术文档** | 65d? | 2017-02-14 | 2017-05-15 |  | 19.5d | 0d |  |  | 49h |
| 70 | 1.3.1.4.1 | 开发设计方案 | 4d? | 2017-02-14 | 2017-02-17 |  | 80.5d |  | finish no earlier than 2017-02-17 | 唐赞勇 | 28h |
| 71 | 1.3.1.4.2 | 详细设计方案 | 2d | 2017-05-11 | 2017-05-12 | 43 | 19.5d | 0d |  | 唐赞勇 | 14h |
| 72 | 1.3.1.4.3 | 数据库结构设计说明书 | 1d? | 2017-05-15 | 2017-05-15 | 71 | 19.5d |  |  | 唐赞勇 | 7h |
| 73 | 1.3.2 | **部署阶段** | 69d? | 2017-03-06 | 2017-06-08 |  | 46.5d |  |  |  | 70h |
| 74 | 1.3.2.1 | 测试环境部署 | 3d | 2017-03-06 | 2017-03-08 |  | 112.5d |  | start no earlier than 2017-03-06 | 尹世胜 | 21h |
| 75 | 1.3.2.2 | 部署文档 | 1d? | 2017-05-16 | 2017-05-16 | 69 | 62.5d | 0d |  | 唐赞勇 | 7h |
| 76 | 1.3.2.3 | 真实环境部署 | 5d | 2017-06-02 | 2017-06-08 | 19 | 46.5d |  |  | 尹世胜 | 35h |
| 77 | 1.3.2.4 | 维护文档 | 1d? | 2017-05-17 | 2017-05-17 | 75 | 62.5d |  |  | 唐赞勇 | 7h |
| 78 | 1.4 | **控制阶段** | 86d? | 2017-02-23 | 2017-06-22 |  | 6d |  |  |  | 199.5h |
| 79 | 1.4.1 | **质量控制** | 15d? | 2017-06-02 | 2017-06-22 |  | 6d |  |  |  | 185.5h |
| 80 | 1.4.1.1 | **功能测试** | 7.5d? | 2017-06-02 | 2017-06-13 |  | 6d | 0d |  |  | 49h |
| 81 | 1.4.1.1.1 | 测试方案 | 0.5d | 2017-06-02 | 2017-06-02 | 19 | 6.5d | 0.5d |  | 王晓胜 | 3.5h |
| 82 | 1.4.1.1.2 | 测试用例 | 1d? | 2017-06-05 | 2017-06-05 | 81 | 6d | 0d | start no earlier than 2017-06-05 | 王晓胜 | 7h |
| 83 | 1.4.1.1.3 | 功能测试 | 5d | 2017-06-06 | 2017-06-12 | 82 | 6d | 0d |  | 王晓胜 | 35h |
| 84 | 1.4.1.1.4 | 测试报告 | 0.5d | 2017-06-13 | 2017-06-13 | 83 | 6d |  |  | 王晓胜 | 3.5h |
| 85 | 1.4.1.2 | **性能测试** | 7.5d | 2017-06-13 | 2017-06-22 | 80 | 6d |  |  |  | 52.5h |
| 86 | 1.4.1.2.1 | 测试脚本编写 | 2d | 2017-06-13 | 2017-06-15 |  | 6d | 0d |  | 王晓胜 | 14h |
| 87 | 1.4.1.2.2 | 性能测试 | 5d | 2017-06-15 | 2017-06-22 | 86 | 6d | 0d |  | 王晓胜 | 35h |
| 88 | 1.4.1.2.3 | 测试报告 | 0.5d | 2017-06-22 | 2017-06-22 | 87 | 6d |  |  | 王晓胜 | 3.5h |
| 89 | 1.4.1.3 | **缺陷处理** | 5d | 2017-06-06 | 2017-06-12 | 83SS | 14d |  |  |  | 84h |
| 90 | 1.4.1.3.1 | 前端缺陷处理 | 5d | 2017-06-06 | 2017-06-12 |  | 14d |  |  | 王美玲 | 35h |
| 91 | 1.4.1.3.2 | 后端缺陷处理 | 5d | 2017-06-06 | 2017-06-12 |  | 14d |  |  | 唐赞勇 | 35h |
| 92 | 1.4.1.3.3 | OPP缺陷处理 | 2d | 2017-06-06 | 2017-06-07 |  | 17d |  |  | 韦正飞 | 14h |

Notes:
- 67: 包括： 用户管理、角色管理、权限管理；

| ID | WBS | Task | Duration | Start | Finish | Predecessors | Total slack | Free slack | Constraint | Resources | Work |
| --- | --- | --- | --- | --- | --- | --- | --- | --- | --- | --- | --- |
| 93 | 1.4.2 | **项目汇报** | 6.5d | 2017-02-23 | 2017-03-03 |  | 85.5d |  |  |  | 14h |
| 94 | 1.4.2.1 | **周汇报** | 6.5d | 2017-02-23 | 2017-03-03 |  | 85.5d |  |  |  | 14h |
| 95 | 1.4.2.1.1 | **第一周汇报** | 1.5d | 2017-02-23 | 2017-02-24 |  | 89.5d | 3.5d |  |  | 7h |
| 96 | 1.4.2.1.1.1 | 项目进度表 | 0.2d | 2017-02-23 | 2017-02-23 |  | 90d | 0d | start no earlier than 2017-02-23 | 林欣欣 | 1.4h |
| 97 | 1.4.2.1.1.2 | 汇报PPT | 0.3d | 2017-02-23 | 2017-02-23 | 96 | 90d | 0.5d |  | 林欣欣 | 2.1h |
| 98 | 1.4.2.1.1.3 | 项目汇报会议 | 0.5d | 2017-02-24 | 2017-02-24 | 97 | 89.5d |  | start no earlier than 2017-02-24 | 张小琴 | 3.5h |
| 99 | 1.4.2.1.2 | **第二周汇报** | 1.5d | 2017-03-02 | 2017-03-03 | 95 | 85.5d |  |  |  | 7h |
| 100 | 1.4.2.1.2.1 | 项目进度表 | 0.2d | 2017-03-02 | 2017-03-02 |  | 86d | 0d | start no earlier than 2017-03-02 | 张小琴 | 1.4h |
| 101 | 1.4.2.1.2.2 | 汇报PPT | 0.3d | 2017-03-02 | 2017-03-02 | 100 | 86d | 0.5d |  | 张小琴 | 2.1h |
| 102 | 1.4.2.1.2.3 | 项目汇报会议 | 0.5d | 2017-03-03 | 2017-03-03 | 101 | 85.5d |  | start no earlier than 2017-03-03 | 张小琴 | 3.5h |
| 103 | 1.5 | **收尾阶段** | 30.5d? | 2017-07-03 | 2017-08-14 | 78 | 0d |  |  |  | 378h |
| 104 | 1.5.1 | **验收材料** | 7d? | 2017-07-03 | 2017-07-11 |  | 0d |  |  |  | 49h |
| 105 | 1.5.1.1 | 项目汇报PPT | 1d? | 2017-07-03 | 2017-07-03 |  | 0d |  | start no earlier than 2017-07-03 | 张小琴 | 7h |
| 106 | 1.5.1.2 | 初验材料 | 3d | 2017-07-04 | 2017-07-06 | 105 | 0d |  |  | 张小琴 | 21h |
| 107 | 1.5.1.3 | 终验材料 | 3d | 2017-07-07 | 2017-07-11 | 106 | 0d |  |  | 张小琴 | 21h |
| 108 | 1.5.2 | **系统培训** | 4d? | 2017-07-12 | 2017-07-17 | 104 | 0d |  |  |  | 28h |
| 109 | 1.5.2.1 | **培训资料准备** | 3d? | 2017-07-12 | 2017-07-14 |  | 0d |  |  |  | 21h |
| 110 | 1.5.2.1.1 | 培训方案报审表 | 1d? | 2017-07-12 | 2017-07-12 |  | 0d |  |  | 张小琴 | 7h |
| 111 | 1.5.2.1.2 | 培训方案 | 1d? | 2017-07-13 | 2017-07-13 | 110 | 0d |  |  | 张小琴 | 7h |
| 112 | 1.5.2.1.3 | 培训报告/培训记录 | 1d? | 2017-07-14 | 2017-07-14 | 111 | 0d |  |  | 张小琴 | 7h |
| 113 | 1.5.2.2 | 培训会议 | 1d? | 2017-07-17 | 2017-07-17 | 112 | 0d |  |  | 张小琴 | 7h |
| 114 | 1.5.3 | **项目验收** | 18d? | 2017-07-18 | 2017-08-10 | 108 | 0d |  |  |  | 266h |
| 115 | 1.5.3.1 | 项目初验 | 1d? | 2017-07-18 | 2017-07-18 |  | 0d |  |  | 林欣欣; 张小琴 | 14h |
| 116 | 1.5.3.2 | 初验意见修改 | 5d | 2017-07-19 | 2017-07-25 | 115 | 0d |  |  | 唐赞勇; 王美玲 | 70h |
| 117 | 1.5.3.3 | 系统试运行 | 10d | 2017-07-26 | 2017-08-08 | 116 | 0d |  |  | 唐赞勇; 王美玲 | 140h |
| 118 | 1.5.3.4 | 项目终验 | 1d? | 2017-08-09 | 2017-08-09 | 117 | 0d |  |  | 林欣欣; 张小琴 | 14h |
| 119 | 1.5.3.5 | 系统上线 | 1d? | 2017-08-10 | 2017-08-10 | 118 | 0d |  |  | 唐赞勇; 王美玲; 尹世胜; 郑一丹 | 28h |

| ID | WBS | Task | Duration | Start | Finish | Predecessors | Total slack | Resources | Work |
| --- | --- | --- | --- | --- | --- | --- | --- | --- | --- |
| 120 | 1.5.4 | **项目总结** | 1.5d? | 2017-08-11 | 2017-08-14 | 114 | 0d |  | 35h |
| 121 | 1.5.4.1 | 项目总结报告 | 1d? | 2017-08-11 | 2017-08-11 |  | 0d | 林欣欣 | 7h |
| 122 | 1.5.4.2 | 项目总结会议 | 0.5d | 2017-08-14 | 2017-08-14 | 121 | 0d | 黄文静; 林欣欣; 唐赞勇; 王美玲; 韦正飞; 尹世胜; 张小琴; 郑一丹 | 28h |
